# PickleVerse (PKV) – GFA26SE111 master schedule

Schedule from MS Project XML, 2026-09-07 to 2026-12-20, status date 2026-11-11.
FPT University

## Calendars

- Standard: Mon-Fri 08:00-12:00, 13:00-17:00; Sat-Sun off.

## Resources

| Resource |
| --- |
| Huỳnh Trung Kiên |
| Nguyễn Văn Thành Đạt |
| Nguyễn Gia Huy |
| Trần Nguyễn Hiếu Thuận |

## Schedule

| ID | WBS | Task | Duration | Start | Finish | Complete | Constraint | Resources | Work |
| --- | --- | --- | --- | --- | --- | --- | --- | --- | --- |
| 1 | 1 | **1 Project management and documentation** | 70d | 2026-09-07 | 2026-12-11 | 81% |  |  | 224h |
| 2 | 1.1 | 1.1 Planning, scheduling and weekly tracking | 70d | 2026-09-07 | 2026-12-11 | 60% | start no earlier than 2026-09-07 | Huỳnh Trung Kiên | 40h |
| 3 | 1.2 | 1.2 Report 1 and Report 2 | 10d | 2026-11-02 | 2026-11-13 | 100% | start no earlier than 2026-11-02 | Nguyễn Gia Huy; Huỳnh Trung Kiên | 24h |
| 4 | 1.3 | 1.3 Report 3 – Software Requirement Specification | 10d | 2026-11-02 | 2026-11-13 | 100% | start no earlier than 2026-11-02 | Nguyễn Gia Huy | 64h |
| 5 | 1.4 | 1.4 Report 4 – Software Design Document | 10d | 2026-11-02 | 2026-11-13 | 100% | start no earlier than 2026-11-02 | Nguyễn Văn Thành Đạt | 56h |
| 6 | 1.5 | 1.5 Reports 5–7, user guides and defense slides | 30d | 2026-11-02 | 2026-12-11 | 35% | start no earlier than 2026-11-02 | Trần Nguyễn Hiếu Thuận; Huỳnh Trung Kiên | 40h |
| 7 | 2 | **2 Foundation and architecture** | 50d | 2026-09-07 | 2026-11-13 | 100% |  |  | 160h |
| 8 | 2.1 | 2.1 Unity project, scenes and assembly structure | 20d | 2026-09-07 | 2026-10-02 | 100% | start no earlier than 2026-09-07 | Nguyễn Gia Huy | 24h |
| 9 | 2.2 | 2.2 Layered Web API, EF Core model and database schema (51 tables) | 10d | 2026-10-19 | 2026-10-30 | 100% | start no earlier than 2026-10-19 | Nguyễn Văn Thành Đạt | 72h |
| 10 | 2.3 | 2.3 Docker Compose environment with PostgreSQL, Redis and S3 storage | 10d | 2026-11-02 | 2026-11-13 | 100% | start no earlier than 2026-11-02 | Nguyễn Văn Thành Đạt | 32h |
| 11 | 2.4 | 2.4 CI/CD pipeline (GitHub Actions, Docker Hub, SSH deployment) | 10d | 2026-11-02 | 2026-11-13 | 100% | start no earlier than 2026-11-02 | Nguyễn Văn Thành Đạt | 32h |
| 12 | 3 | **3 Gameplay core** | 20d | 2026-10-05 | 2026-10-30 | 100% |  |  | 240h |
| 13 | 3.1 | 3.1 Ball flight and bounce simulation at 120 Hz | 10d | 2026-10-05 | 2026-10-16 | 100% | start no earlier than 2026-10-05 | Nguyễn Gia Huy | 64h |
| 14 | 3.2 | 3.2 Paddle contact, shot input and seven shot kinds | 10d | 2026-10-05 | 2026-10-16 | 100% | start no earlier than 2026-10-05 | Nguyễn Gia Huy | 56h |
| 15 | 3.3 | 3.3 Singles rules engine (scoring, serve, faults, non-volley zone) | 10d | 2026-10-05 | 2026-10-16 | 100% | start no earlier than 2026-10-05 | Nguyễn Gia Huy | 56h |
| 16 | 3.4 | 3.4 Character movement and animation controller | 10d | 2026-10-05 | 2026-10-16 | 100% | start no earlier than 2026-10-05 | Nguyễn Gia Huy | 40h |
| 17 | 3.5 | 3.5 Match flow, HUD, intro cinematic and result screen | 20d | 2026-10-05 | 2026-10-30 | 100% | start no earlier than 2026-10-05 | Trần Nguyễn Hiếu Thuận | 24h |
| 18 | 4 | **4 FE-01 Account and onboarding** | 20d | 2026-10-19 | 2026-11-13 | 98% |  |  | 128h |
| 19 | 4.1 | 4.1 Registration and OTP email verification | 10d | 2026-10-19 | 2026-10-30 | 100% | start no earlier than 2026-10-19 | Nguyễn Văn Thành Đạt | 32h |
| 20 | 4.2 | 4.2 Sign in, sign out, JWT access and refresh tokens | 20d | 2026-10-19 | 2026-11-13 | 100% | start no earlier than 2026-10-19 | Nguyễn Văn Thành Đạt | 32h |
| 21 | 4.3 | 4.3 Password recovery | 10d | 2026-11-02 | 2026-11-13 | 100% | start no earlier than 2026-11-02 | Trần Nguyễn Hiếu Thuận | 16h |
| 22 | 4.4 | 4.4 Profile, character and onboarding level | 10d | 2026-10-19 | 2026-10-30 | 80% | start no earlier than 2026-10-19 | Trần Nguyễn Hiếu Thuận | 16h |
| 23 | 4.5 | 4.5 Settings: audio, graphics, key binding, touch layout | 10d | 2026-10-19 | 2026-10-30 | 100% | start no earlier than 2026-10-19 | Trần Nguyễn Hiếu Thuận | 32h |
| 24 | 5 | **5 FE-02 Tutorial and technique training** | 40d | 2026-10-05 | 2026-11-27 | 92% |  |  | 184h |
| 25 | 5.1 | 5.1 Interactive tutorial (17 steps) | 10d | 2026-10-05 | 2026-10-16 | 100% | start no earlier than 2026-10-05 | Nguyễn Gia Huy | 40h |
| 26 | 5.2 | 5.2 Lesson and drill framework with star scoring | 30d | 2026-10-05 | 2026-11-13 | 100% | start no earlier than 2026-10-05 | Nguyễn Gia Huy | 56h |
| 27 | 5.3 | 5.3 Content of 15 lessons and 12 techniques | 10d | 2026-11-02 | 2026-11-13 | 100% | start no earlier than 2026-11-02 | Nguyễn Gia Huy | 40h |
| 28 | 5.4 | 5.4 Offline training and one-time synchronisation | 20d | 2026-11-02 | 2026-11-27 | 70% | start no earlier than 2026-11-02 | Nguyễn Văn Thành Đạt | 48h |

Notes:
- 2: Complexity Medium; Doing; Weekly tracking continues to the defense
- 3: Complexity Simple; Done; v1.0 on 11/11/2026; first versions late (06/11)
- 4: Complexity Complex; Done; v1.0 on 11/11/2026
- 5: Complexity Complex; Done; v1.0 on 11/11/2026
- 6: Complexity Medium; Doing; Report 5 v1.0 done; Reports 6 and 7 pending
- 8: Complexity Simple; Done; Unity project initialised 17/09/2026
- 9: Complexity Complex; Done; Normalised schema 31/10/2026 (51 tables)
- 10: Complexity Medium; Done; Docker deployment 04/11/2026
- 11: Complexity Medium; Done; Validate, publish and deploy jobs; Unity tests not in CI
- 13: Complexity Complex; Done; Covered by EditMode tests
- 14: Complexity Complex; Done; PaddleContactTests, SinglesMatchTests
- 15: Complexity Complex; Done; SinglesMatchTests, MultiplayerRulesTests
- 16: Complexity Medium; Done; D-07 open
- 17: Complexity Simple; Done; D-10 open
- 19: Complexity Medium; Done; TC-F01-01 pending (test mailbox)
- 20: Complexity Medium; Done; TC-F01-02 passed
- 21: Complexity Simple; Done; Not yet system-tested
- 22: Complexity Simple; Doing; D-07 character choice not applied everywhere
- 23: Complexity Medium; Done;
- 25: Complexity Medium; Done; TC-F02-01 passed
- 26: Complexity Complex; Done; TC-F03-01..03 passed
- 27: Complexity Medium; Done; 15 lessons seeded
- 28: Complexity Complex; Doing; TC-F14-02 pending; D-02 open

| ID | WBS | Task | Duration | Start | Finish | Complete | Constraint | Resources | Work |
| --- | --- | --- | --- | --- | --- | --- | --- | --- | --- |
| 29 | 6 | **6 FE-03 Bot practice** | 20d | 2026-10-05 | 2026-10-30 | 100% |  |  | 120h |
| 30 | 6.1 | 6.1 Fixed-level bot (Easy, Medium, Hard) | 10d | 2026-10-05 | 2026-10-16 | 100% | start no earlier than 2026-10-05 | Nguyễn Gia Huy | 40h |
| 31 | 6.2 | 6.2 Adaptive behaviour-tree bot with Elo tiers | 10d | 2026-10-19 | 2026-10-30 | 100% | start no earlier than 2026-10-19 | Nguyễn Văn Thành Đạt | 56h |
| 32 | 6.3 | 6.3 Bot match setup, court and lighting options, rewards | 10d | 2026-10-05 | 2026-10-16 | 100% | start no earlier than 2026-10-05 | Trần Nguyễn Hiếu Thuận | 24h |
| 33 | 7 | **7 FE-04 Online matches** | 30d | 2026-10-19 | 2026-11-27 | 85% |  |  | 288h |
| 34 | 7.1 | 7.1 Photon Fusion session, lobby and room codes | 10d | 2026-10-19 | 2026-10-30 | 100% | start no earlier than 2026-10-19 | Nguyễn Văn Thành Đạt | 56h |
| 35 | 7.2 | 7.2 Ranked matchmaking, ready check and bot fallback | 20d | 2026-11-02 | 2026-11-27 | 85% | start no earlier than 2026-11-02 | Nguyễn Văn Thành Đạt | 56h |
| 36 | 7.3 | 7.3 Dedicated server build, signed tickets, lease and result | 20d | 2026-11-02 | 2026-11-27 | 80% | start no earlier than 2026-11-02 | Nguyễn Văn Thành Đạt | 72h |
| 37 | 7.4 | 7.4 State synchronisation, input prediction and reconnection | 20d | 2026-11-02 | 2026-11-27 | 70% | start no earlier than 2026-11-02 | Nguyễn Văn Thành Đạt | 72h |
| 38 | 7.5 | 7.5 Elo rating and match result persistence | 10d | 2026-11-02 | 2026-11-13 | 100% | start no earlier than 2026-11-02 | Nguyễn Văn Thành Đạt | 32h |
| 39 | 8 | **8 FE-05 AI coaching** | 20d | 2026-10-19 | 2026-11-13 | 100% |  |  | 144h |
| 40 | 8.1 | 8.1 Telemetry capture, local spool and upload | 10d | 2026-11-02 | 2026-11-13 | 100% | start no earlier than 2026-11-02 | Nguyễn Văn Thành Đạt | 40h |
| 41 | 8.2 | 8.2 FastAPI rule engine and gated tier model | 20d | 2026-10-19 | 2026-11-13 | 100% | start no earlier than 2026-10-19 | Nguyễn Văn Thành Đạt | 56h |
| 42 | 8.3 | 8.3 Hybrid analysis worker, analysis jobs and coaching panel | 10d | 2026-11-02 | 2026-11-13 | 100% | start no earlier than 2026-11-02 | Nguyễn Gia Huy | 48h |
| 43 | 9 | **9 FE-06 Progress, rewards and shop** | 10d | 2026-10-05 | 2026-10-16 | 100% |  |  | 120h |
| 44 | 9.1 | 9.1 XP, levels, technique mastery and progress dashboard | 10d | 2026-10-05 | 2026-10-16 | 100% | start no earlier than 2026-10-05 | Nguyễn Gia Huy | 40h |
| 45 | 9.2 | 9.2 Daily and weekly missions, achievements, streak rewards | 10d | 2026-10-05 | 2026-10-16 | 100% | start no earlier than 2026-10-05 | Nguyễn Văn Thành Đạt | 40h |
| 46 | 9.3 | 9.3 Currencies, shop and collection | 10d | 2026-10-05 | 2026-10-16 | 100% | start no earlier than 2026-10-05 | Nguyễn Gia Huy | 40h |
| 47 | 10 | **10 FE-07 Social, history and ranking** | 20d | 2026-10-05 | 2026-10-30 | 100% |  |  | 96h |
| 48 | 10.1 | 10.1 Friends, blocking and room invitations | 20d | 2026-10-05 | 2026-10-30 | 100% | start no earlier than 2026-10-05 | Nguyễn Văn Thành Đạt | 32h |
| 49 | 10.2 | 10.2 Match history, replay recording and replay viewer | 20d | 2026-10-05 | 2026-10-30 | 100% | start no earlier than 2026-10-05 | Nguyễn Văn Thành Đạt | 48h |
| 50 | 10.3 | 10.3 Elo leaderboard with cache | 10d | 2026-10-05 | 2026-10-16 | 100% | start no earlier than 2026-10-05 | Huỳnh Trung Kiên | 16h |
| 51 | 11 | **11 FE-08 Reports, restrictions and appeals** | 10d | 2026-11-02 | 2026-11-13 | 100% |  |  | 48h |
| 52 | 11.1 | 11.1 Player report after a match | 10d | 2026-11-02 | 2026-11-13 | 100% | start no earlier than 2026-11-02 | Huỳnh Trung Kiên | 16h |
| 53 | 11.2 | 11.2 Restricted access, decision view and appeal | 10d | 2026-11-02 | 2026-11-13 | 100% | start no earlier than 2026-11-02 | Huỳnh Trung Kiên | 32h |

Notes:
- 30: Complexity Medium; Done; D-13 balance session pending
- 31: Complexity Complex; Done; BhTreeTests passed
- 32: Complexity Simple; Done; D-05 label
- 34: Complexity Complex; Done; Moved to Photon Fusion 20/10/2026
- 35: Complexity Complex; Doing; D-15 fallback timing
- 36: Complexity Complex; Doing; D-09 human ranked matches interrupted
- 37: Complexity Complex; Doing; Reconnect fix 10/11/2026; TC-F09-03 pending
- 38: Complexity Medium; Done; D-08 start Elo decision
- 40: Complexity Medium; Done;
- 41: Complexity Complex; Done; Tier model gated (NFR-06)
- 42: Complexity Medium; Done; D-02, D-11 open
- 44: Complexity Medium; Done;
- 45: Complexity Medium; Done;
- 46: Complexity Medium; Done; D-12 Elite Token source
- 48: Complexity Medium; Done; TC-F12-01 pending
- 49: Complexity Complex; Done;
- 50: Complexity Simple; Done;
- 52: Complexity Simple; Done; TC-F17-01 pending
- 53: Complexity Medium; Done; TC-F17-03 pending

| ID | WBS | Task | Type | Duration | Start | Finish | Predecessors | Complete | Constraint | Resources | Work |
| --- | --- | --- | --- | --- | --- | --- | --- | --- | --- | --- | --- |
| 54 | 12 | **12 FE-09 Administration web application** |  | 20d | 2026-10-19 | 2026-11-13 |  | 100% |  |  | 192h |
| 55 | 12.1 | 12.1 Admin authentication, layout and protected routing |  | 10d | 2026-10-19 | 2026-10-30 |  | 100% | start no earlier than 2026-10-19 | Huỳnh Trung Kiên | 16h |
| 56 | 12.2 | 12.2 User management, sanctions and progress reset |  | 10d | 2026-11-02 | 2026-11-13 |  | 100% | start no earlier than 2026-11-02 | Huỳnh Trung Kiên | 48h |
| 57 | 12.3 | 12.3 Content management: lessons, references, cosmetics, missions |  | 10d | 2026-11-02 | 2026-11-13 |  | 100% | start no earlier than 2026-11-02 | Huỳnh Trung Kiên | 48h |
| 58 | 12.4 | 12.4 Live match monitoring and stopping |  | 10d | 2026-11-02 | 2026-11-13 |  | 100% | start no earlier than 2026-11-02 | Nguyễn Văn Thành Đạt | 32h |
| 59 | 12.5 | 12.5 Moderation of player reports and appeals |  | 10d | 2026-11-02 | 2026-11-13 |  | 100% | start no earlier than 2026-11-02 | Huỳnh Trung Kiên | 24h |
| 60 | 12.6 | 12.6 Analytics dashboard |  | 10d | 2026-11-02 | 2026-11-13 |  | 100% | start no earlier than 2026-11-02 | Huỳnh Trung Kiên | 24h |
| 61 | 13 | **13 FE-10 Expert review** |  | 10d | 2026-11-02 | 2026-11-13 |  | 100% |  |  | 32h |
| 62 | 13.1 | 13.1 Shot labelling and dataset export |  | 10d | 2026-11-02 | 2026-11-13 |  | 100% | start no earlier than 2026-11-02 | Nguyễn Văn Thành Đạt | 32h |
| 63 | 14 | **14 Art, audio and interface assets** |  | 40d | 2026-09-21 | 2026-11-13 |  | 100% |  |  | 120h |
| 64 | 14.1 | 14.1 Characters, 20 animation clips, courts and stadium |  | 20d | 2026-09-21 | 2026-10-16 |  | 100% | start no earlier than 2026-09-21 | Nguyễn Gia Huy | 64h |
| 65 | 14.2 | 14.2 Music and sound effects |  | 10d | 2026-10-05 | 2026-10-16 |  | 100% | start no earlier than 2026-10-05 | Huỳnh Trung Kiên | 16h |
| 66 | 14.3 | 14.3 Front-end screens, loading artwork and Vietnamese fonts |  | 20d | 2026-10-19 | 2026-11-13 |  | 100% | start no earlier than 2026-10-19 | Trần Nguyễn Hiếu Thuận | 40h |
| 67 | 15 | **15 Testing and release** |  | 30d | 2026-11-02 | 2026-12-11 |  | 28% |  |  | 144h |
| 68 | 15.1 | 15.1 Unit tests (Unity EditMode, Python) and coverage |  | 20d | 2026-11-02 | 2026-11-27 |  | 50% | start no earlier than 2026-11-02 | Trần Nguyễn Hiếu Thuận | 40h |
| 69 | 15.2 | 15.2 Integration and system testing on staging |  | 20d | 2026-11-16 | 2026-12-11 |  | 30% | start no earlier than 2026-11-16 | Trần Nguyễn Hiếu Thuận | 40h |
| 70 | 15.3 | 15.3 Acceptance tests, playtests and defect fixing |  | 20d | 2026-11-16 | 2026-12-11 |  |  | start no earlier than 2026-11-16 | Huỳnh Trung Kiên; Nguyễn Văn Thành Đạt; Nguyễn Gia Huy; Trần Nguyễn Hiếu Thuận | 48h |
| 71 | 15.4 | 15.4 Staging deployment and release package |  | 30d | 2026-11-02 | 2026-12-11 |  | 50% | start no earlier than 2026-11-02 | Nguyễn Văn Thành Đạt | 16h |
| 72 | 16 | **Milestones** |  | 70d | 2026-09-13 | 2026-12-20 |  |  |  |  |  |
| 73 | 16.1 | M01 Report 1 – Project Introduction | milestone | 0d | 2026-09-13 | 2026-09-13 | 3 | 100% | start no earlier than 2026-09-13 |  |  |
| 74 | 16.2 | M02 Report 2 – Project Management Plan | milestone | 0d | 2026-09-20 | 2026-09-20 | 3 | 100% | start no earlier than 2026-09-20 |  |  |
| 75 | 16.3 | M03 Report 3 – SRS | milestone | 0d | 2026-09-27 | 2026-09-27 | 4 | 100% | start no earlier than 2026-09-27 |  |  |
| 76 | 16.4 | M04 Report 4 – SDD and test plan | milestone | 0d | 2026-10-11 | 2026-10-11 | 5 | 100% | start no earlier than 2026-10-11 |  |  |
| 77 | 16.5 | M05 Software Package 1 (Review 2) | milestone | 0d | 2026-10-25 | 2026-10-25 | 15, 26, 64 | 100% | start no earlier than 2026-10-25 |  |  |
| 78 | 16.6 | M06 Software Package 2 | milestone | 0d | 2026-11-08 | 2026-11-08 | 11, 60, 42 | 100% | start no earlier than 2026-11-08 |  |  |
| 79 | 16.7 | M07 Software Package 3 (Review 3) | milestone | 0d | 2026-11-22 | 2026-11-22 | 36, 69 |  | start no earlier than 2026-11-22 |  |  |
| 80 | 16.8 | M08 Full software package | milestone | 0d | 2026-12-06 | 2026-12-06 | 69 |  | start no earlier than 2026-12-06 |  |  |
| 81 | 16.9 | M09 Report 6 – User Guides | milestone | 0d | 2026-12-13 | 2026-12-13 | 6 |  | start no earlier than 2026-12-13 |  |  |
| 82 | 16.10 | M10 Report 7 and final defense | milestone | 0d | 2026-12-20 | 2026-12-20 | 70, 71 |  | start no earlier than 2026-12-20 |  |  |

Notes:
- 55: Complexity Simple; Done;
- 56: Complexity Complex; Done; Admin cases pending in Round 2
- 57: Complexity Medium; Done;
- 58: Complexity Medium; Done;
- 59: Complexity Medium; Done;
- 60: Complexity Medium; Done;
- 62: Complexity Medium; Done; No labelled real data yet
- 64: Complexity Complex; Done;
- 65: Complexity Simple; Done;
- 66: Complexity Medium; Done; D-01, D-04 open
- 68: Complexity Medium; Doing; 515 EditMode tests passed; coverage not measured
- 69: Complexity Medium; Doing; Round 1 done; Rounds 2–3 planned
- 70: Complexity Medium; Pending; Acceptance 07–11/12/2026
- 71: Complexity Simple; Doing; Staging running; release package pending
- 73: Actual: 06/11/2026
- 74: Actual: 06/11/2026
- 75: Actual: 06/11/2026
- 76: Actual: 06/11/2026
- 77: Actual: 27/10/2026
- 78: Actual: 06/11/2026
- 79: Actual: planned
- 80: Actual: planned
- 81: Actual: planned
- 82: Actual: planned
